Schedule from MS Project, 2026-09-21 to 2027-05-06.

## Calendars

- Standard: Mon-Fri 08:00-12:00, 13:00-17:00; Sat-Sun off.

## Resources

| Resource |
| --- |
| Mubashir |
| Nouman |
| Areesha |

## Schedule

| ID | WBS | Task | Type | Duration | Start | Finish | Predecessors | Total slack | Free slack | Constraint | Resources | Work |
| --- | --- | --- | --- | --- | --- | --- | --- | --- | --- | --- | --- | --- |
| 1 | 1 | Project baseline starts | milestone | 0d | 2026-09-21 | 2026-09-21 |  | 5d | 1d |  |  |  |
| 2 | 2 | **Planning** |  | 15d | 2026-09-21 | 2026-10-09 |  | 4d |  |  |  | 264h |
| 3 | 2.1 | Project scope and objectives |  | 10d | 2026-09-21 | 2026-10-02 | 1FS-1d | 4d | 0d | start no earlier than 2026-09-21 | Mubashir [20%]; Nouman [20%]; Areesha [20%] | 48h |
| 4 | 2.2 | Requirements and feature finalization |  | 15d | 2026-09-21 | 2026-10-09 | 3FS-10d | 39d | 0d | start no earlier than 2026-09-21 | Mubashir [20%]; Nouman [20%]; Areesha [20%] | 72h |
| 5 | 2.3 | User roles, modules and system workflow |  | 10d | 2026-09-28 | 2026-10-09 | 4FS-10d | 149d | 0d | start no earlier than 2026-09-28 | Mubashir [20%]; Nouman [20%]; Areesha [20%] | 48h |
| 6 | 2.4 | Research comparable systems and feasibility |  | 10d | 2026-09-21 | 2026-10-02 | 3FS-10d | 154d | 5d | start no earlier than 2026-09-21 | Mubashir [20%]; Nouman [20%]; Areesha [20%] | 48h |
| 7 | 2.5 | Finalize payment, cancellation, vendor rejection and combined-delivery rules |  | 10d | 2026-09-28 | 2026-10-09 | 5FS-10d | 149d | 0d | start no earlier than 2026-09-28 | Mubashir [20%]; Nouman [20%]; Areesha [20%] | 48h |
| 8 | 2.6 | Requirements and scope approved | milestone | 0d | 2026-10-09 | 2026-10-09 | 3, 4, 5, 6, 7 | 149d |  |  |  |  |
| 9 | 3 | **Design** |  | 15d | 2026-10-05 | 2026-10-23 |  | 4d |  |  |  | 179.36h |
| 10 | 3.1 | Web and mobile wireframes |  | 10d | 2026-10-05 | 2026-10-16 | 3 | 4d | 0d | start no earlier than 2026-10-05 | Mubashir [25%]; Areesha [25%] | 40h |
| 11 | 3.2 | Final UI/UX design |  | 10d | 2026-10-12 | 2026-10-23 | 10FS-5d | 39d | 0d | start no earlier than 2026-10-12 | Mubashir [33.3%]; Areesha [50%] | 66.64h |
| 12 | 3.3 | Architecture, API contracts and technology selection |  | 10d | 2026-10-12 | 2026-10-23 | 4 | 39d | 0d | start no earlier than 2026-10-12 | Mubashir [33.3%]; Nouman [57.6%] | 72.72h |
| 13 | 3.4 | Design baseline approved | milestone | 0d | 2026-10-23 | 2026-10-23 | 10, 11, 12 | 39d | 36d |  |  |  |
| 14 | 4 | **Web Frontend** |  | 40d | 2026-10-19 | 2026-12-11 |  | 4d |  |  |  | 239.76h |
| 15 | 4.1 | Core layouts and navigation |  | 15d | 2026-10-19 | 2026-11-06 | 10 | 4d | 0d | start no earlier than 2026-10-19 | Areesha [33.3%] | 39.96h |
| 16 | 4.2 | User account and profile interfaces |  | 15d | 2026-10-26 | 2026-11-13 | 15FS-10d | 4d | 0d | start no earlier than 2026-10-26 | Areesha [33.3%] | 39.96h |
| 17 | 4.3 | Vendor and product browsing interfaces |  | 20d | 2026-11-02 | 2026-11-27 | 16FS-10d | 4d | 0d | start no earlier than 2026-11-02 | Areesha [33.3%] | 53.28h |
| 18 | 4.4 | Cart, checkout and order interfaces |  | 15d | 2026-11-16 | 2026-12-04 | 17FS-10d | 4d | 0d | start no earlier than 2026-11-16 | Areesha [33.3%] | 39.96h |
| 19 | 4.5 | Vendor and admin interfaces |  | 15d | 2026-11-23 | 2026-12-11 | 18FS-10d | 4d | 0d | start no earlier than 2026-11-23 | Areesha [33.3%] | 39.96h |
| 20 | 4.6 | Responsive refinement and frontend review |  | 10d | 2026-11-30 | 2026-12-11 | 19FS-10d | 4d | 0d | start no earlier than 2026-11-30 | Areesha [33.3%] | 26.64h |
| 21 | 4.7 | Web interface ready | milestone | 0d | 2026-12-11 | 2026-12-11 | 15, 16, 17, 18, 19, 20 | 4d | 1d |  |  |  |
| 22 | 5 | **Mobile Frontend** |  | 40d | 2026-10-19 | 2026-12-11 |  | 104d |  |  |  | 239.76h |
| 23 | 5.1 | Core screens and navigation |  | 15d | 2026-10-19 | 2026-11-06 | 10 | 104d | 0d | start no earlier than 2026-10-19 | Mubashir [33.3%] | 39.96h |
| 24 | 5.2 | User account and profile screens |  | 15d | 2026-10-26 | 2026-11-13 | 23FS-10d | 104d | 0d | start no earlier than 2026-10-26 | Mubashir [33.3%] | 39.96h |
| 25 | 5.3 | Vendor and product browsing screens |  | 20d | 2026-11-02 | 2026-11-27 | 24FS-10d | 104d | 0d | start no earlier than 2026-11-02 | Mubashir [33.3%] | 53.28h |
| 26 | 5.4 | Cart, checkout and order screens |  | 15d | 2026-11-16 | 2026-12-04 | 25FS-10d | 104d | 0d | start no earlier than 2026-11-16 | Mubashir [33.3%] | 39.96h |
| 27 | 5.5 | Vendor and rider screens |  | 15d | 2026-11-23 | 2026-12-11 | 26FS-10d | 104d | 0d | start no earlier than 2026-11-23 | Mubashir [33.3%] | 39.96h |
| 28 | 5.6 | Mobile UI refinement and frontend review |  | 10d | 2026-11-30 | 2026-12-11 | 27FS-10d | 104d | 0d | start no earlier than 2026-11-30 | Mubashir [33.3%] | 26.64h |
| 29 | 5.7 | Mobile interface ready | milestone | 0d | 2026-12-11 | 2026-12-11 | 23, 24, 25, 26, 27, 28 | 104d |  |  |  |  |

| ID | WBS | Task | Type | Duration | Start | Finish | Predecessors | Total slack | Free slack | Constraint | Resources | Work |
| --- | --- | --- | --- | --- | --- | --- | --- | --- | --- | --- | --- | --- |
| 30 | 6 | **Backend** |  | 40d | 2026-12-15 | 2027-02-08 |  | 3d |  |  |  | 690.64h |
| 31 | 6.1 | Backend structure and database design |  | 10d | 2026-12-15 | 2026-12-28 | 13 | 3d | 0d | start no earlier than 2026-12-15 | Mubashir [50%]; Nouman [50%] | 80h |
| 32 | 6.2 | User accounts, roles and access control |  | 10d | 2026-12-22 | 2027-01-04 | 31FS-5d | 3d | 0d | start no earlier than 2026-12-22 | Mubashir [33.3%]; Nouman [33.3%] | 53.28h |
| 33 | 6.3 | Vendor and store management |  | 10d | 2026-12-29 | 2027-01-11 | 32FS-5d | 3d | 0d | start no earlier than 2026-12-29 | Mubashir [33.3%]; Nouman [33.3%] | 53.28h |
| 34 | 6.4 | Product, category and inventory management |  | 15d | 2026-12-29 | 2027-01-18 | 33FS-10d | 3d | 0d | start no earlier than 2026-12-29 | Mubashir [33.3%]; Nouman [33.3%] | 79.92h |
| 35 | 6.5 | Multi-vendor cart and checkout logic |  | 10d | 2027-01-12 | 2027-01-25 | 34FS-5d | 3d | 0d | start no earlier than 2027-01-12 | Mubashir [50%]; Nouman [50%] | 80h |
| 36 | 6.6 | Order and vendor-wise order management |  | 10d | 2027-01-19 | 2027-02-01 | 35FS-5d | 3d | 0d | start no earlier than 2027-01-19 | Mubashir [33.3%]; Nouman [33.3%] | 53.28h |
| 37 | 6.7 | Billing, commission and delivery fee logic |  | 10d | 2027-01-26 | 2027-02-08 | 36FS-5d | 3d | 0d | start no earlier than 2027-01-26 | Mubashir [33.3%]; Nouman [33.3%] | 53.28h |
| 38 | 6.8 | Rider assignment and order status management |  | 10d | 2027-01-26 | 2027-02-08 | 36FS-5d | 3d | 0d | start no earlier than 2027-01-26 | Mubashir [33.3%]; Nouman [33.3%] | 53.28h |
| 39 | 6.9 | Web API client layer and mock-API setup |  | 10d | 2026-12-15 | 2026-12-28 | 21 | 3d | 0d | start no earlier than 2026-12-15 | Areesha [57.6%] | 46.08h |
| 40 | 6.10 | Web frontend testing, accessibility review and documentation drafts |  | 20d | 2026-12-29 | 2027-01-25 | 39 | 3d | 0d | start no earlier than 2026-12-29 | Areesha [57.6%] | 92.16h |
| 41 | 6.11 | Prepare web integration test cases and API contract checks |  | 10d | 2027-01-26 | 2027-02-08 | 40 | 3d | 0d | start no earlier than 2027-01-26 | Areesha [57.6%] | 46.08h |
| 42 | 6.12 | Core backend ready | milestone | 0d | 2027-02-08 | 2027-02-08 | 31, 32, 33, 34, 35, 36, 37, 38, 41 | 3d | 1d |  |  |  |
| 43 | 7 | **Integration** |  | 20d | 2027-02-10 | 2027-03-09 |  | 2d |  |  |  | 359.92h |
| 44 | 7.1 | Web frontend integration |  | 10d | 2027-02-10 | 2027-02-23 | 42 | 2d | 0d | start no earlier than 2027-02-10 | Nouman [33.3%]; Areesha [50%] | 66.64h |
| 45 | 7.2 | Mobile frontend integration |  | 10d | 2027-02-10 | 2027-02-23 | 42 | 12d | 10d | start no earlier than 2027-02-10 | Mubashir [50%]; Nouman [33.3%] | 66.64h |
| 46 | 7.3 | Cart, checkout and order flow integration |  | 10d | 2027-02-17 | 2027-03-02 | 44FS-5d | 2d | 0d | start no earlier than 2027-02-17 | Mubashir [50%]; Nouman [33.3%]; Areesha [50%] | 106.64h |
| 47 | 7.4 | Vendor, rider and admin flow integration |  | 10d | 2027-02-24 | 2027-03-09 | 46FS-5d | 2d | 0d | start no earlier than 2027-02-24 | Mubashir [50%]; Nouman [50%]; Areesha [50%] | 120h |
| 48 | 7.5 | Core workflows integrated | milestone | 0d | 2027-03-09 | 2027-03-09 | 44, 45, 46, 47 | 2d | 1d |  |  |  |
| 49 | 8 | **Advanced Features** |  | 15d | 2027-03-11 | 2027-03-31 |  | 1d |  |  |  | 240h |
| 50 | 8.1 | Current location and nearby vendor functionality |  | 10d | 2027-03-11 | 2027-03-24 | 48 | 1d | 0d | start no earlier than 2027-03-11 | Mubashir [25%]; Nouman [25%] | 40h |
| 51 | 8.2 | Route optimization and rider tracking |  | 15d | 2027-03-11 | 2027-03-31 | 50FS-10d | 1d | 0d | start no earlier than 2027-03-11 | Mubashir [25%]; Nouman [25%] | 60h |
| 52 | 8.3 | Order-history product/vendor recommendations and notifications |  | 10d | 2027-03-18 | 2027-03-31 | 48 | 1d | 0d | start no earlier than 2027-03-18 | Mubashir [25%]; Nouman [25%]; Areesha [50%] | 80h |
| 53 | 8.4 | AI shopping assistant connected to live marketplace data |  | 15d | 2027-03-11 | 2027-03-31 | 48 | 1d | 0d | start no earlier than 2027-03-11 | Mubashir [25%]; Nouman [25%] | 60h |
| 54 | 8.5 | Intelligent features ready | milestone | 0d | 2027-03-31 | 2027-03-31 | 50, 51, 52, 53 | 1d |  |  |  |  |

| ID | WBS | Task | Type | Duration | Start | Finish | Predecessors | Total slack | Free slack | Constraint | Resources | Work |
| --- | --- | --- | --- | --- | --- | --- | --- | --- | --- | --- | --- | --- |
| 55 | 9 | **Testing** |  | 21d | 2027-03-25 | 2027-04-22 |  | 6d |  |  |  | 199.92h |
| 56 | 9.1 | Functional and integration testing |  | 15d | 2027-03-25 | 2027-04-14 | 50 | 11d | 0d | start no earlier than 2027-03-25 | Mubashir [25%]; Nouman [25%]; Areesha [33.3%] | 99.96h |
| 57 | 9.2 | Performance testing and bug fixing |  | 15d | 2027-04-02 | 2027-04-22 | 54 | 0d |  | start no earlier than 2027-04-02 | Mubashir [25%]; Nouman [25%]; Areesha [33.3%] | 99.96h |
| 58 | 9.3 | Testing and defect review completed | milestone | 0d | 2027-04-22 | 2027-04-22 | 56, 57 | 10d |  |  |  |  |
| 59 | 10 | **Finalization** |  | 21d | 2027-04-08 | 2027-05-06 |  | 0d |  |  |  | 286.52h |
| 60 | 10.1 | Deployment and final configuration |  | 10d | 2027-04-08 | 2027-04-21 | 56FS-5d | 11d |  | start no earlier than 2027-04-08 | Mubashir [25%]; Nouman [25%] | 40h |
| 61 | 10.2 | Final system review and optimization |  | 10d | 2027-04-16 | 2027-04-29 | 57FS-5d | 0d |  | start no earlier than 2027-04-16 | Mubashir [25%]; Nouman [25%]; Areesha [33.3%] | 66.64h |
| 62 | 10.3 | Final demo and presentation preparation |  | 10d | 2027-04-23 | 2027-05-06 | 61FS-5d | 0d |  | start no earlier than 2027-04-23 | Mubashir [33.3%]; Nouman [33.3%]; Areesha [33.3%] | 79.92h |
| 63 | 10.4 | Final report, user guide and technical documentation |  | 15d | 2027-04-08 | 2027-04-28 | 48 | 6d |  | start no earlier than 2027-04-08 | Mubashir [25%]; Nouman [25%]; Areesha [33.3%] | 99.96h |
| 64 | 10.5 | Final demo and submission ready | milestone | 0d | 2027-05-06 | 2027-05-06 | 60, 61, 62, 63 | 0d |  |  |  |  |
